# TopCoder Software Project Plan

Schedule from MS Project, 2004-01-27 to 2006-09-28, A marks actual dates.
TopCoder Software Project Plan
TopCoder

## Calendars

- Standard: Mon-Fri 08:00-12:00, 13:00-17:00; Sat-Sun off.

## Resources

| Resource |
| --- |
| Project Manager |
| Component Architect |
| Information Architect |
| Component Manager |
| Application Architect |
| Application Assembler 1 |
| Deployment Engineer 1 |
| Customer |
| Member |
| Review |
| Application Assembler 4 |
| Application Assembler 3 |
| Application Assembler 2 |
| Deployment Engineer 3 |
| Deployment Engineer 2 |
| Deployment Engineer |
| Deployment Engineer/Project Manager |
| Javier |
| Greg Paul |
| Dave Messinger |
| Lorie Norman |
| Tony Jefts |
| test case participants |
| All Teams |
| All Captains |
| Reviewer3 |
| Reviewer2 |
| Reviewer1 |
| Assembly Manager |
| Architect |
| DE |
| Review Team |
| Kim Ruhl |
| Petar Canic |
| WishingBone |
| Brian Chang |
| Dean Brodrick |

## Schedule

| ID | WBS | Task | Type | Duration | Start | Finish | Predecessors | Complete | Remaining | Baseline start | Baseline finish | Baseline duration | Total slack | Constraint | Resources | Work | Actual work |
| --- | --- | --- | --- | --- | --- | --- | --- | --- | --- | --- | --- | --- | --- | --- | --- | --- | --- |
| 1 | 1 | **TopCoder Online Review/Scorecard Project** |  | 698d? | 2004-01-27 A | 2006-09-28 |  | 10% | 628.23d? |  |  |  | 0d |  |  | 6176h | 629.2h |
| 2 | 1.1 | Kick Off Meeting |  | 0.33d? | 2006-03-02 | 2006-03-02 |  |  |  |  |  |  | 135.67d | start no earlier than 2006-03-02 | Dave Messinger; Lorie Norman; Tony Jefts | 8h |  |
| 3 | 1.2 | Creation of TopCoder Application Forum |  | 1d | 2006-03-02 A | 2006-03-03 A | 2 | 100% |  |  |  |  |  | start no earlier than 2005-06-29 | Lorie Norman | 8h | 8h |
| 4 | 1.3 | Assign Client Permissions to Forums |  | 1d | 2006-03-02 A | 2006-03-02 A |  | 100% |  |  |  |  |  | start no earlier than 2005-06-29 | Lorie Norman | 8h | 8h |
| 5 | 1.4 | Create SVN module for Application |  | 1d | 2005-06-29 A | 2005-06-29 A |  | 100% |  |  |  |  |  | start no earlier than 2005-06-29 | Lorie Norman | 8h | 8h |
| 6 | 1.5 | Key Stakeholder Meetings |  | 1.5d | 2006-03-06 A | 2006-03-07 A |  | 100% |  |  |  |  |  | start no earlier than 2006-03-06 | Greg Paul; Javier; Dave Messinger; Lorie Norman | 48h | 48h |
| 7 | 1.6 | **Application Specification** |  | 33.5d? | 2006-03-02 A | 2006-04-18 A |  | 100% |  | 2004-01-20 | 2004-02-11 | 17d? |  |  |  | 280h | 280h |
| 8 | 1.6.1 | **Requirement Specification Draft** |  | 1d | 2006-03-03 A | 2006-03-03 A |  | 100% |  | 2004-01-20 | 2004-01-22 | 3d? |  |  | Lorie Norman | 8h | 8h |
| 9 | 1.6.1.1 | Fill in Scope |  | 1d | 2006-03-03 A | 2006-03-03 A |  | 100% |  |  |  |  |  | start no earlier than 2006-03-03 |  |  |  |
| 10 | 1.6.2 | Review Meeting |  | 0.5d | 2006-03-06 A | 2006-03-06 A | 8 | 100% |  | 2004-01-23 | 2004-01-23 | 1d? |  |  | Project Manager; Customer | 8h | 8h |
| 11 | 1.6.3 | Create/Update Use Cases |  | 2d | 2006-03-02 A | 2006-03-03 A |  | 100% |  |  |  |  |  | start no earlier than 2006-03-02 |  |  |  |
| 12 | 1.6.4 | **Module Specification** |  | 18.5d | 2006-03-09 A | 2006-04-04 A |  | 100% |  | 2004-01-23 | 2004-02-11 | 14d? |  |  |  | 80h | 80h |
| 13 | 1.6.4.1 | Create/Update Activity Diagram |  | 10d | 2006-03-15 A | 2006-03-28 A | 10 | 100% |  |  |  |  |  | finish no earlier than 2006-03-28 | Project Manager | 80h | 80h |
| 14 | 1.6.4.2 | Fill in Logic Requirements for use cases and activity diagrams |  | 5d | 2006-03-09 A | 2006-04-03 A | 13 | 100% |  |  |  |  |  |  |  |  |  |
| 15 | 1.6.4.3 | Review Meeting |  | 1d | 2006-04-04 A | 2006-04-04 A | 14 | 100% |  |  |  |  |  | start no earlier than 2006-03-10 |  |  |  |
| 16 | 1.6.5 | Create Site Map |  | 1d? | 2006-04-04 A | 2006-04-04 A |  | 100% |  |  |  |  |  | start no earlier than 2006-04-04 |  |  |  |
| 17 | 1.6.6 | Review Meeting |  | 0.5d | 2006-04-03 A | 2006-04-03 A |  | 100% |  |  |  |  |  | start no earlier than 2006-04-03 |  |  |  |
| 18 | 1.6.7 | Prototype Revision 1 |  | 14d | 2006-03-20 A | 2006-04-06 A |  | 100% |  |  |  |  |  | finish no earlier than 2006-04-06 | Kim Ruhl | 112h | 112h |
| 19 | 1.6.8 | Architecture Diagram Draft |  | 1d | 2006-03-22 A | 2006-03-23 A | 17 | 100% |  | 2004-01-27 | 2004-01-28 | 2d? |  | start no earlier than 2005-01-19 | Project Manager | 8h | 8h |
| 20 | 1.6.9 | Fill in Technical Requirements |  | 0.5d | 2006-04-04 A | 2006-04-04 A | 19 | 100% |  |  |  |  |  | start no earlier than 2006-04-04 |  |  |  |
| 21 | 1.6.10 | Review Meeting |  | 2d | 2006-04-07 A | 2006-04-10 A | 18 | 100% |  | 2004-01-30 | 2004-01-30 | 1d? |  | start no earlier than 2006-04-07 | Project Manager; Customer | 32h | 32h |
| 22 | 1.6.11 | Prototype Revision 2 Review |  | 2d | 2006-04-11 A | 2006-04-12 A | 21 | 100% |  |  |  |  |  | start no earlier than 2006-04-11 |  |  |  |
| 23 | 1.6.12 | Complete QA Plan |  | 1d | 2006-04-05 A | 2006-04-05 A | 12 | 100% |  |  |  |  |  |  |  |  |  |
| 24 | 1.6.13 | Review Meeting |  | 0.5d | 2006-04-13 A | 2006-04-13 A | 22 | 100% |  | 2004-02-06 | 2004-02-06 | 1d? |  |  | Project Manager; Customer | 8h | 8h |
| 25 | 1.6.14 | Update Final Specification Deliverables |  | 2d | 2006-04-13 A | 2006-04-17 A | 24 | 100% |  | 2004-02-09 | 2004-02-10 | 2d? |  | start no earlier than 2006-04-06 | Project Manager | 16h | 16h |
| 26 | 1.6.15 | Final Specification Presentation | milestone | 1d? | 2006-04-17 A | 2006-04-18 A | 25 | 100% |  | 2004-02-11 | 2004-02-11 | 1d? |  |  | Project Manager | 8h | 8h |

Notes:
- 12: This will be iterated over multiple times for each module.

| ID | WBS | Task | Type | Duration | Start | Finish | Predecessors | Complete | Remaining | Total slack | Free slack | Constraint | Resources | Work | Actual work |
| --- | --- | --- | --- | --- | --- | --- | --- | --- | --- | --- | --- | --- | --- | --- | --- |
| 27 | 1.7 | **Application Architecture** |  | 30.5d | 2006-04-18 A | 2006-05-30 |  | 39% | 18.6d | 87d |  |  |  | 656h | 277.2h |
| 28 | 1.7.1 | Test Scenarios |  | 10d | 2006-05-08 A | 2006-05-19 A | 23 | 100% |  |  |  | start no earlier than 2006-05-08 | Dean Brodrick | 80h | 80h |
| 29 | 1.7.2 | Update Site Map |  | 5d | 2006-04-18 A | 2006-04-25 A | 7 | 100% |  |  |  |  | Kim Ruhl; Petar Canic | 80h | 80h |
| 30 | 1.6.3 | Physical Data Model Definition |  | 5d | 2006-04-18 A | 2006-04-25 A | 7 | 100% |  |  |  | finish no earlier than 2005-02-04 | WishingBone | 40h | 40h |
| 31 | 1.7.4 | **UML Diagrams** |  | 27d | 2006-04-20 A | 2006-05-28 |  | 20% | 21.68d | 89d |  |  |  | 392h | 77.2h |
| 32 | 1.6.2 | Component Sequence Diagrams |  | 27d | 2006-04-20 A | 2006-05-28 |  | 25% | 20.35d | 74d |  | finish no earlier than 2006-05-28 | WishingBone | 216h | 53.2h |
| 33 | 1.6.1 | Component Interface Diagram |  | 20d | 2006-05-01 A | 2006-05-28 |  | 15% | 17d | 74d |  | finish no earlier than 2006-05-28 | WishingBone | 160h | 24h |
| 34 | 1.7.4.3 | Component Diagram |  | 2d | 2006-05-25 | 2006-05-28 |  |  |  | 74d |  | finish no earlier than 2006-05-28 | WishingBone | 16h |  |
| 35 | 1.6.5 | Component Specifications | milestone | 5d | 2006-05-22 | 2006-05-26 |  |  |  | 72d | 0d | finish no earlier than 2006-05-26 | Component Architect | 40h |  |
| 36 | 1.7.6 | Application Design Specification |  | 1d | 2006-05-29 | 2006-05-29 | 35 |  |  | 72d | 0d | finish no earlier than 2006-05-29 | Component Architect | 8h |  |
| 37 | 1.7.7 | Review |  | 1d | 2006-05-30 | 2006-05-30 | 36 |  |  | 72d |  |  | Project Manager; Component Architect | 16h |  |
| 38 | 1.8 | **Component Production** |  | 46d | 2006-05-25 | 2006-07-27 |  |  |  | 0d |  |  |  | 4576h |  |
| 39 | 1.8.1 | **File Upload 2.0** |  | 26d | 2006-05-25 | 2006-06-29 |  |  |  | 20d |  |  |  | 208h |  |
| 40 | 1.8.1.1 | Design Posting |  | 6d | 2006-05-25 | 2006-06-01 |  |  |  | 5d | 0d | start no earlier than 2006-05-25 | Member | 48h |  |
| 41 | 1.8.1.2 | Design Review |  | 4d | 2006-06-02 | 2006-06-07 | 40 |  |  | 5d | 0d | finish no earlier than 2005-03-21 | Member | 32h |  |
| 42 | 1.8.1.3 | Design Final Fixes |  | 2d | 2006-06-08 | 2006-06-09 | 41 |  |  | 5d | 0d |  | Member | 16h |  |
| 43 | 1.8.1.4 | Creation of Dev Distro |  | 1d | 2006-06-12 | 2006-06-12 | 42 |  |  | 5d | 0d |  | Component Manager | 8h |  |
| 44 | 1.8.1.5 | Development Posting |  | 6d | 2006-06-13 | 2006-06-20 | 43 |  |  | 5d | 0d | start no earlier than 2005-03-30 | Member | 48h |  |
| 45 | 1.8.1.6 | Development Review |  | 4d | 2006-06-21 | 2006-06-26 | 44 |  |  | 5d | 0d |  | Member | 32h |  |
| 46 | 1.8.1.7 | Development Final Fixes |  | 2d | 2006-06-27 | 2006-06-28 | 45 |  |  | 5d | 0d | finish no earlier than 2005-04-06 | Member | 16h |  |
| 47 | 1.8.1.8 | Post to Catalog |  | 1d | 2006-06-29 | 2006-06-29 | 46 |  |  | 5d |  |  | Component Manager | 8h |  |
| 48 | 1.8.2 | **Cached Web Element Tag** |  | 26d | 2006-05-25 | 2006-06-29 |  |  |  | 20d |  |  |  | 208h |  |
| 49 | 1.8.2.1 | Design Posting |  | 6d | 2006-05-25 | 2006-06-01 |  |  |  | 5d | 0d | start no earlier than 2006-05-25 | Member | 48h |  |
| 50 | 1.8.2.2 | Design Review |  | 4d | 2006-06-02 | 2006-06-07 | 49 |  |  | 5d | 0d | finish no earlier than 2005-03-21 | Member | 32h |  |
| 51 | 1.8.2.3 | Design Final Fixes |  | 2d | 2006-06-08 | 2006-06-09 | 50 |  |  | 5d | 0d |  | Member | 16h |  |
| 52 | 1.8.2.4 | Creation of Dev Distro |  | 1d | 2006-06-12 | 2006-06-12 | 51 |  |  | 5d | 0d |  | Component Manager | 8h |  |
| 53 | 1.8.2.5 | Development Posting |  | 6d | 2006-06-13 | 2006-06-20 | 52 |  |  | 5d | 0d | start no earlier than 2005-03-30 | Member | 48h |  |
| 54 | 1.8.2.6 | Development Review |  | 4d | 2006-06-21 | 2006-06-26 | 53 |  |  | 5d | 0d |  | Member | 32h |  |
| 55 | 1.8.2.7 | Development Final Fixes |  | 2d | 2006-06-27 | 2006-06-28 | 54 |  |  | 5d | 0d | finish no earlier than 2005-04-06 | Member | 16h |  |
| 56 | 1.8.2.8 | Post to Catalog |  | 1d | 2006-06-29 | 2006-06-29 | 55 |  |  | 5d |  |  | Component Manager | 8h |  |

| ID | WBS | Task | Duration | Start | Finish | Predecessors | Total slack | Free slack | Constraint | Resources | Work |
| --- | --- | --- | --- | --- | --- | --- | --- | --- | --- | --- | --- |
| 57 | 1.8.3 | **Database Abstraction 1.1** | 26d | 2006-05-25 | 2006-06-29 |  | 20d |  |  |  | 208h |
| 58 | 1.8.3.1 | Design Posting | 6d | 2006-05-25 | 2006-06-01 |  | 5d | 0d | start no earlier than 2006-05-25 | Member | 48h |
| 59 | 1.8.3.2 | Design Review | 4d | 2006-06-02 | 2006-06-07 | 58 | 5d | 0d | finish no earlier than 2005-03-21 | Member | 32h |
| 60 | 1.8.3.3 | Design Final Fixes | 2d | 2006-06-08 | 2006-06-09 | 59 | 5d | 0d |  | Member | 16h |
| 61 | 1.8.3.4 | Creation of Dev Distro | 1d | 2006-06-12 | 2006-06-12 | 60 | 5d | 0d |  | Component Manager | 8h |
| 62 | 1.8.3.5 | Development Posting | 6d | 2006-06-13 | 2006-06-20 | 61 | 5d | 0d | start no earlier than 2005-03-30 | Member | 48h |
| 63 | 1.8.3.6 | Development Review | 4d | 2006-06-21 | 2006-06-26 | 62 | 5d | 0d |  | Member | 32h |
| 64 | 1.8.3.7 | Development Final Fixes | 2d | 2006-06-27 | 2006-06-28 | 63 | 5d | 0d | finish no earlier than 2005-04-06 | Member | 16h |
| 65 | 1.8.3.8 | Post to Catalog | 1d | 2006-06-29 | 2006-06-29 | 64 | 5d |  |  | Component Manager | 8h |
| 66 | 1.8.4 | **Search Builder - Bug Fix** | 26d | 2006-05-25 | 2006-06-29 |  | 20d |  |  |  | 208h |
| 67 | 1.8.4.1 | Design Posting | 6d | 2006-05-25 | 2006-06-01 |  | 5d | 0d | start no earlier than 2006-05-25 | Member | 48h |
| 68 | 1.8.4.2 | Design Review | 4d | 2006-06-02 | 2006-06-07 | 67 | 5d | 0d | finish no earlier than 2005-03-21 | Member | 32h |
| 69 | 1.8.4.3 | Design Final Fixes | 2d | 2006-06-08 | 2006-06-09 | 68 | 5d | 0d |  | Member | 16h |
| 70 | 1.8.4.4 | Creation of Dev Distro | 1d | 2006-06-12 | 2006-06-12 | 69 | 5d | 0d |  | Component Manager | 8h |
| 71 | 1.8.4.5 | Development Posting | 6d | 2006-06-13 | 2006-06-20 | 70 | 5d | 0d | start no earlier than 2005-03-30 | Member | 48h |
| 72 | 1.8.4.6 | Development Review | 4d | 2006-06-21 | 2006-06-26 | 71 | 5d | 0d |  | Member | 32h |
| 73 | 1.8.4.7 | Development Final Fixes | 2d | 2006-06-27 | 2006-06-28 | 72 | 5d | 0d | finish no earlier than 2005-04-06 | Member | 16h |
| 74 | 1.8.4.8 | Post to Catalog | 1d | 2006-06-29 | 2006-06-29 | 73 | 5d |  |  | Component Manager | 8h |
| 75 | 1.8.5 | **Scorecard Management** | 26d | 2006-06-01 | 2006-07-06 |  | 15d |  |  |  | 208h |
| 76 | 1.8.5.1 | Design Posting | 6d | 2006-06-01 | 2006-06-08 |  | 15d | 0d | start no earlier than 2006-06-01 | Member | 48h |
| 77 | 1.8.5.2 | Design Review | 4d | 2006-06-09 | 2006-06-14 | 76 | 15d | 0d | finish no earlier than 2005-03-21 | Member | 32h |
| 78 | 1.8.5.3 | Design Final Fixes | 2d | 2006-06-15 | 2006-06-16 | 77 | 15d | 0d |  | Member | 16h |
| 79 | 1.8.5.4 | Creation of Dev Distro | 1d | 2006-06-19 | 2006-06-19 | 78 | 15d | 0d |  | Component Manager | 8h |
| 80 | 1.8.5.5 | Development Posting | 6d | 2006-06-20 | 2006-06-27 | 79 | 15d | 0d | start no earlier than 2005-03-30 | Member | 48h |
| 81 | 1.8.5.6 | Development Review | 4d | 2006-06-28 | 2006-07-03 | 80 | 15d | 0d |  | Member | 32h |
| 82 | 1.8.5.7 | Development Final Fixes | 2d | 2006-07-04 | 2006-07-05 | 81 | 15d | 0d | finish no earlier than 2005-04-06 | Member | 16h |
| 83 | 1.8.5.8 | Post to Catalog | 1d | 2006-07-06 | 2006-07-06 | 82 | 15d |  |  | Component Manager | 8h |

| ID | WBS | Task | Duration | Start | Finish | Predecessors | Total slack | Free slack | Constraint | Resources | Work |
| --- | --- | --- | --- | --- | --- | --- | --- | --- | --- | --- | --- |
| 84 | 1.8.6 | **Review Management** | 26d | 2006-06-01 | 2006-07-06 |  | 15d |  |  |  | 208h |
| 85 | 1.8.6.1 | Design Posting | 6d | 2006-06-01 | 2006-06-08 |  | 15d | 0d | start no earlier than 2006-06-01 | Member | 48h |
| 86 | 1.8.6.2 | Design Review | 4d | 2006-06-09 | 2006-06-14 | 85 | 15d | 0d | finish no earlier than 2005-03-21 | Member | 32h |
| 87 | 1.8.6.3 | Design Final Fixes | 2d | 2006-06-15 | 2006-06-16 | 86 | 15d | 0d |  | Member | 16h |
| 88 | 1.8.6.4 | Creation of Dev Distro | 1d | 2006-06-19 | 2006-06-19 | 87 | 15d | 0d |  | Component Manager | 8h |
| 89 | 1.8.6.5 | Development Posting | 6d | 2006-06-20 | 2006-06-27 | 88 | 15d | 0d | start no earlier than 2005-03-30 | Member | 48h |
| 90 | 1.8.6.6 | Development Review | 4d | 2006-06-28 | 2006-07-03 | 89 | 15d | 0d |  | Member | 32h |
| 91 | 1.8.6.7 | Development Final Fixes | 2d | 2006-07-04 | 2006-07-05 | 90 | 15d | 0d | finish no earlier than 2005-04-06 | Member | 16h |
| 92 | 1.8.6.8 | Post to Catalog | 1d | 2006-07-06 | 2006-07-06 | 91 | 15d |  |  | Component Manager | 8h |
| 93 | 1.8.7 | **Project Phases Management** | 26d | 2006-06-08 | 2006-07-13 |  | 10d |  |  |  | 208h |
| 94 | 1.8.7.1 | Design Posting | 6d | 2006-06-08 | 2006-06-15 |  | 10d | 0d | start no earlier than 2006-06-08 | Member | 48h |
| 95 | 1.8.7.2 | Design Review | 4d | 2006-06-16 | 2006-06-21 | 94 | 10d | 0d | finish no earlier than 2005-03-21 | Member | 32h |
| 96 | 1.8.7.3 | Design Final Fixes | 2d | 2006-06-22 | 2006-06-23 | 95 | 10d | 0d |  | Member | 16h |
| 97 | 1.8.7.4 | Creation of Dev Distro | 1d | 2006-06-26 | 2006-06-26 | 96 | 10d | 0d |  | Component Manager | 8h |
| 98 | 1.8.7.5 | Development Posting | 6d | 2006-06-27 | 2006-07-04 | 97 | 10d | 0d | start no earlier than 2005-03-30 | Member | 48h |
| 99 | 1.8.7.6 | Development Review | 4d | 2006-07-05 | 2006-07-10 | 98 | 10d | 0d |  | Member | 32h |
| 100 | 1.8.7.7 | Development Final Fixes | 2d | 2006-07-11 | 2006-07-12 | 99 | 10d | 0d | finish no earlier than 2005-04-06 | Member | 16h |
| 101 | 1.8.7.8 | Post to Catalog | 1d | 2006-07-13 | 2006-07-13 | 100 | 10d |  |  | Component Manager | 8h |
| 102 | 1.8.8 | **Review Score Calculator** | 26d | 2006-06-08 | 2006-07-13 |  | 10d |  |  |  | 208h |
| 103 | 1.8.8.1 | Design Posting | 6d | 2006-06-08 | 2006-06-15 |  | 10d | 0d | start no earlier than 2006-06-08 | Member | 48h |
| 104 | 1.8.8.2 | Design Review | 4d | 2006-06-16 | 2006-06-21 | 103 | 10d | 0d | finish no earlier than 2005-03-21 | Member | 32h |
| 105 | 1.8.8.3 | Design Final Fixes | 2d | 2006-06-22 | 2006-06-23 | 104 | 10d | 0d |  | Member | 16h |
| 106 | 1.8.8.4 | Creation of Dev Distro | 1d | 2006-06-26 | 2006-06-26 | 105 | 10d | 0d |  | Component Manager | 8h |
| 107 | 1.8.8.5 | Development Posting | 6d | 2006-06-27 | 2006-07-04 | 106 | 10d | 0d | start no earlier than 2005-03-30 | Member | 48h |
| 108 | 1.8.8.6 | Development Review | 4d | 2006-07-05 | 2006-07-10 | 107 | 10d | 0d |  | Member | 32h |
| 109 | 1.8.8.7 | Development Final Fixes | 2d | 2006-07-11 | 2006-07-12 | 108 | 10d | 0d | finish no earlier than 2005-04-06 | Member | 16h |
| 110 | 1.8.8.8 | Post to Catalog | 1d | 2006-07-13 | 2006-07-13 | 109 | 10d |  |  | Component Manager | 8h |

| ID | WBS | Task | Duration | Start | Finish | Predecessors | Total slack | Free slack | Constraint | Resources | Work |
| --- | --- | --- | --- | --- | --- | --- | --- | --- | --- | --- | --- |
| 111 | 1.8.9 | **Review Score Aggregator** | 26d | 2006-06-08 | 2006-07-13 |  | 10d |  |  |  | 208h |
| 112 | 1.8.9.1 | Design Posting | 6d | 2006-06-08 | 2006-06-15 |  | 10d | 0d | start no earlier than 2006-06-08 | Member | 48h |
| 113 | 1.8.9.2 | Design Review | 4d | 2006-06-16 | 2006-06-21 | 112 | 10d | 0d | finish no earlier than 2005-03-21 | Member | 32h |
| 114 | 1.8.9.3 | Design Final Fixes | 2d | 2006-06-22 | 2006-06-23 | 113 | 10d | 0d |  | Member | 16h |
| 115 | 1.8.9.4 | Creation of Dev Distro | 1d | 2006-06-26 | 2006-06-26 | 114 | 10d | 0d |  | Component Manager | 8h |
| 116 | 1.8.9.5 | Development Posting | 6d | 2006-06-27 | 2006-07-04 | 115 | 10d | 0d | start no earlier than 2005-03-30 | Member | 48h |
| 117 | 1.8.9.6 | Development Review | 4d | 2006-07-05 | 2006-07-10 | 116 | 10d | 0d |  | Member | 32h |
| 118 | 1.8.9.7 | Development Final Fixes | 2d | 2006-07-11 | 2006-07-12 | 117 | 10d | 0d | finish no earlier than 2005-04-06 | Member | 16h |
| 119 | 1.8.9.8 | Post to Catalog | 1d | 2006-07-13 | 2006-07-13 | 118 | 10d |  |  | Component Manager | 8h |
| 120 | 1.8.10 | **Project Management** | 26d | 2006-06-08 | 2006-07-13 |  | 10d |  |  |  | 208h |
| 121 | 1.8.10.1 | Design Posting | 6d | 2006-06-08 | 2006-06-15 |  | 10d | 0d | start no earlier than 2006-06-08 | Member | 48h |
| 122 | 1.8.10.2 | Design Review | 4d | 2006-06-16 | 2006-06-21 | 121 | 10d | 0d | finish no earlier than 2005-03-21 | Member | 32h |
| 123 | 1.8.10.3 | Design Final Fixes | 2d | 2006-06-22 | 2006-06-23 | 122 | 10d | 0d |  | Member | 16h |
| 124 | 1.8.10.4 | Creation of Dev Distro | 1d | 2006-06-26 | 2006-06-26 | 123 | 10d | 0d |  | Component Manager | 8h |
| 125 | 1.8.10.5 | Development Posting | 6d | 2006-06-27 | 2006-07-04 | 124 | 10d | 0d | start no earlier than 2005-03-30 | Member | 48h |
| 126 | 1.8.10.6 | Development Review | 4d | 2006-07-05 | 2006-07-10 | 125 | 10d | 0d |  | Member | 32h |
| 127 | 1.8.10.7 | Development Final Fixes | 2d | 2006-07-11 | 2006-07-12 | 126 | 10d | 0d | finish no earlier than 2005-04-06 | Member | 16h |
| 128 | 1.8.10.8 | Post to Catalog | 1d | 2006-07-13 | 2006-07-13 | 127 | 10d |  |  | Component Manager | 8h |
| 129 | 1.8.11 | **Resource Management** | 26d | 2006-06-08 | 2006-07-13 |  | 10d |  |  |  | 208h |
| 130 | 1.8.11.1 | Design Posting | 6d | 2006-06-08 | 2006-06-15 |  | 10d | 0d | start no earlier than 2006-06-08 | Member | 48h |
| 131 | 1.8.11.2 | Design Review | 4d | 2006-06-16 | 2006-06-21 | 130 | 10d | 0d | finish no earlier than 2005-03-21 | Member | 32h |
| 132 | 1.8.11.3 | Design Final Fixes | 2d | 2006-06-22 | 2006-06-23 | 131 | 10d | 0d |  | Member | 16h |
| 133 | 1.8.11.4 | Creation of Dev Distro | 1d | 2006-06-26 | 2006-06-26 | 132 | 10d | 0d |  | Component Manager | 8h |
| 134 | 1.8.11.5 | Development Posting | 6d | 2006-06-27 | 2006-07-04 | 133 | 10d | 0d | start no earlier than 2005-03-30 | Member | 48h |
| 135 | 1.8.11.6 | Development Review | 4d | 2006-07-05 | 2006-07-10 | 134 | 10d | 0d |  | Member | 32h |
| 136 | 1.8.11.7 | Development Final Fixes | 2d | 2006-07-11 | 2006-07-12 | 135 | 10d | 0d | finish no earlier than 2005-04-06 | Member | 16h |
| 137 | 1.8.11.8 | Post to Catalog | 1d | 2006-07-13 | 2006-07-13 | 136 | 10d |  |  | Component Manager | 8h |

| ID | WBS | Task | Duration | Start | Finish | Predecessors | Total slack | Free slack | Constraint | Resources | Work |
| --- | --- | --- | --- | --- | --- | --- | --- | --- | --- | --- | --- |
| 138 | 1.8.12 | **Deliverable Management** | 26d | 2006-06-15 | 2006-07-20 |  | 5d |  |  |  | 208h |
| 139 | 1.8.12.1 | Design Posting | 6d | 2006-06-15 | 2006-06-22 |  | 5d | 0d | start no earlier than 2006-06-15 | Member | 48h |
| 140 | 1.8.12.2 | Design Review | 4d | 2006-06-23 | 2006-06-28 | 139 | 5d | 0d | finish no earlier than 2005-03-21 | Member | 32h |
| 141 | 1.8.12.3 | Design Final Fixes | 2d | 2006-06-29 | 2006-06-30 | 140 | 5d | 0d |  | Member | 16h |
| 142 | 1.8.12.4 | Creation of Dev Distro | 1d | 2006-07-03 | 2006-07-03 | 141 | 5d | 0d |  | Component Manager | 8h |
| 143 | 1.8.12.5 | Development Posting | 6d | 2006-07-04 | 2006-07-11 | 142 | 5d | 0d | start no earlier than 2005-03-30 | Member | 48h |
| 144 | 1.8.12.6 | Development Review | 4d | 2006-07-12 | 2006-07-17 | 143 | 5d | 0d |  | Member | 32h |
| 145 | 1.8.12.7 | Development Final Fixes | 2d | 2006-07-18 | 2006-07-19 | 144 | 5d | 0d | finish no earlier than 2005-04-06 | Member | 16h |
| 146 | 1.8.12.8 | Post to Catalog | 1d | 2006-07-20 | 2006-07-20 | 145 | 5d |  |  | Component Manager | 8h |
| 147 | 1.8.13 | **Phase Management** | 26d | 2006-06-15 | 2006-07-20 |  | 5d |  |  |  | 208h |
| 148 | 1.8.13.1 | Design Posting | 6d | 2006-06-15 | 2006-06-22 |  | 5d | 0d | start no earlier than 2006-06-15 | Member | 48h |
| 149 | 1.8.13.2 | Design Review | 4d | 2006-06-23 | 2006-06-28 | 148 | 5d | 0d | finish no earlier than 2005-03-21 | Member | 32h |
| 150 | 1.8.13.3 | Design Final Fixes | 2d | 2006-06-29 | 2006-06-30 | 149 | 5d | 0d |  | Member | 16h |
| 151 | 1.8.13.4 | Creation of Dev Distro | 1d | 2006-07-03 | 2006-07-03 | 150 | 5d | 0d |  | Component Manager | 8h |
| 152 | 1.8.13.5 | Development Posting | 6d | 2006-07-04 | 2006-07-11 | 151 | 5d | 0d | start no earlier than 2005-03-30 | Member | 48h |
| 153 | 1.8.13.6 | Development Review | 4d | 2006-07-12 | 2006-07-17 | 152 | 5d | 0d |  | Member | 32h |
| 154 | 1.8.13.7 | Development Final Fixes | 2d | 2006-07-18 | 2006-07-19 | 153 | 5d | 0d | finish no earlier than 2005-04-06 | Member | 16h |
| 155 | 1.8.13.8 | Post to Catalog | 1d | 2006-07-20 | 2006-07-20 | 154 | 5d |  |  | Component Manager | 8h |
| 156 | 1.8.14 | **Project Phase Template** | 26d | 2006-06-15 | 2006-07-20 |  | 5d |  |  |  | 208h |
| 157 | 1.8.14.1 | Design Posting | 6d | 2006-06-15 | 2006-06-22 |  | 5d | 0d | start no earlier than 2006-06-15 | Member | 48h |
| 158 | 1.8.14.2 | Design Review | 4d | 2006-06-23 | 2006-06-28 | 157 | 5d | 0d | finish no earlier than 2005-03-21 | Member | 32h |
| 159 | 1.8.14.3 | Design Final Fixes | 2d | 2006-06-29 | 2006-06-30 | 158 | 5d | 0d |  | Member | 16h |
| 160 | 1.8.14.4 | Creation of Dev Distro | 1d | 2006-07-03 | 2006-07-03 | 159 | 5d | 0d |  | Component Manager | 8h |
| 161 | 1.8.14.5 | Development Posting | 6d | 2006-07-04 | 2006-07-11 | 160 | 5d | 0d | start no earlier than 2005-03-30 | Member | 48h |
| 162 | 1.8.14.6 | Development Review | 4d | 2006-07-12 | 2006-07-17 | 161 | 5d | 0d |  | Member | 32h |
| 163 | 1.8.14.7 | Development Final Fixes | 2d | 2006-07-18 | 2006-07-19 | 162 | 5d | 0d | finish no earlier than 2005-04-06 | Member | 16h |
| 164 | 1.8.14.8 | Post to Catalog | 1d | 2006-07-20 | 2006-07-20 | 163 | 5d |  |  | Component Manager | 8h |

| ID | WBS | Task | Duration | Start | Finish | Predecessors | Total slack | Free slack | Constraint | Resources | Work |
| --- | --- | --- | --- | --- | --- | --- | --- | --- | --- | --- | --- |
| 165 | 1.8.15 | **Online Review Login (custom)** | 26d | 2006-06-15 | 2006-07-20 |  | 5d |  |  |  | 208h |
| 166 | 1.8.15.1 | Design Posting | 6d | 2006-06-15 | 2006-06-22 |  | 5d | 0d | start no earlier than 2006-06-15 | Member | 48h |
| 167 | 1.8.15.2 | Design Review | 4d | 2006-06-23 | 2006-06-28 | 166 | 5d | 0d | finish no earlier than 2005-03-21 | Member | 32h |
| 168 | 1.8.15.3 | Design Final Fixes | 2d | 2006-06-29 | 2006-06-30 | 167 | 5d | 0d |  | Member | 16h |
| 169 | 1.8.15.4 | Creation of Dev Distro | 1d | 2006-07-03 | 2006-07-03 | 168 | 5d | 0d |  | Component Manager | 8h |
| 170 | 1.8.15.5 | Development Posting | 6d | 2006-07-04 | 2006-07-11 | 169 | 5d | 0d | start no earlier than 2005-03-30 | Member | 48h |
| 171 | 1.8.15.6 | Development Review | 4d | 2006-07-12 | 2006-07-17 | 170 | 5d | 0d |  | Member | 32h |
| 172 | 1.8.15.7 | Development Final Fixes | 2d | 2006-07-18 | 2006-07-19 | 171 | 5d | 0d | finish no earlier than 2005-04-06 | Member | 16h |
| 173 | 1.8.15.8 | Post to Catalog | 1d | 2006-07-20 | 2006-07-20 | 172 | 5d |  |  | Component Manager | 8h |
| 174 | 1.8.16 | **User Project Data Store (custom)** | 26d | 2006-06-15 | 2006-07-20 |  | 5d |  |  |  | 208h |
| 175 | 1.8.16.1 | Design Posting | 6d | 2006-06-15 | 2006-06-22 |  | 5d | 0d | start no earlier than 2006-06-15 | Member | 48h |
| 176 | 1.8.16.2 | Design Review | 4d | 2006-06-23 | 2006-06-28 | 175 | 5d | 0d | finish no earlier than 2005-03-21 | Member | 32h |
| 177 | 1.8.16.3 | Design Final Fixes | 2d | 2006-06-29 | 2006-06-30 | 176 | 5d | 0d |  | Member | 16h |
| 178 | 1.8.16.4 | Creation of Dev Distro | 1d | 2006-07-03 | 2006-07-03 | 177 | 5d | 0d |  | Component Manager | 8h |
| 179 | 1.8.16.5 | Development Posting | 6d | 2006-07-04 | 2006-07-11 | 178 | 5d | 0d | start no earlier than 2005-03-30 | Member | 48h |
| 180 | 1.8.16.6 | Development Review | 4d | 2006-07-12 | 2006-07-17 | 179 | 5d | 0d |  | Member | 32h |
| 181 | 1.8.16.7 | Development Final Fixes | 2d | 2006-07-18 | 2006-07-19 | 180 | 5d | 0d | finish no earlier than 2005-04-06 | Member | 16h |
| 182 | 1.8.16.8 | Post to Catalog | 1d | 2006-07-20 | 2006-07-20 | 181 | 5d |  |  | Component Manager | 8h |
| 183 | 1.8.17 | **Online Review Ajax Support (custom)** | 26d | 2006-06-22 | 2006-07-27 |  | 0d |  |  |  | 208h |
| 184 | 1.8.17.1 | Design Posting | 6d | 2006-06-22 | 2006-06-29 |  | 0d |  | start no earlier than 2006-06-22 | Member | 48h |
| 185 | 1.8.17.2 | Design Review | 4d | 2006-06-30 | 2006-07-05 | 184 | 0d |  | finish no earlier than 2005-03-21 | Member | 32h |
| 186 | 1.8.17.3 | Design Final Fixes | 2d | 2006-07-06 | 2006-07-07 | 185 | 0d |  |  | Member | 16h |
| 187 | 1.8.17.4 | Creation of Dev Distro | 1d | 2006-07-10 | 2006-07-10 | 186 | 0d |  |  | Component Manager | 8h |
| 188 | 1.8.17.5 | Development Posting | 6d | 2006-07-11 | 2006-07-18 | 187 | 0d |  | start no earlier than 2005-03-30 | Member | 48h |
| 189 | 1.8.17.6 | Development Review | 4d | 2006-07-19 | 2006-07-24 | 188 | 0d |  |  | Member | 32h |
| 190 | 1.8.17.7 | Development Final Fixes | 2d | 2006-07-25 | 2006-07-26 | 189 | 0d |  | finish no earlier than 2005-04-06 | Member | 16h |
| 191 | 1.8.17.8 | Post to Catalog | 1d | 2006-07-27 | 2006-07-27 | 190 | 0d |  |  | Component Manager | 8h |

| ID | WBS | Task | Duration | Start | Finish | Predecessors | Total slack | Constraint | Resources | Work |
| --- | --- | --- | --- | --- | --- | --- | --- | --- | --- | --- |
| 192 | 1.8.18 | **Online Review Deliverables (custom)** | 26d | 2006-06-22 | 2006-07-27 |  | 0d |  |  | 208h |
| 193 | 1.8.18.1 | Design Posting | 6d | 2006-06-22 | 2006-06-29 |  | 0d | start no earlier than 2006-06-22 | Member | 48h |
| 194 | 1.8.18.2 | Design Review | 4d | 2006-06-30 | 2006-07-05 | 193 | 0d | finish no earlier than 2005-03-21 | Member | 32h |
| 195 | 1.8.18.3 | Design Final Fixes | 2d | 2006-07-06 | 2006-07-07 | 194 | 0d |  | Member | 16h |
| 196 | 1.8.18.4 | Creation of Dev Distro | 1d | 2006-07-10 | 2006-07-10 | 195 | 0d |  | Component Manager | 8h |
| 197 | 1.8.18.5 | Development Posting | 6d | 2006-07-11 | 2006-07-18 | 196 | 0d | start no earlier than 2005-03-30 | Member | 48h |
| 198 | 1.8.18.6 | Development Review | 4d | 2006-07-19 | 2006-07-24 | 197 | 0d |  | Member | 32h |
| 199 | 1.8.18.7 | Development Final Fixes | 2d | 2006-07-25 | 2006-07-26 | 198 | 0d | finish no earlier than 2005-04-06 | Member | 16h |
| 200 | 1.8.18.8 | Post to Catalog | 1d | 2006-07-27 | 2006-07-27 | 199 | 0d |  | Component Manager | 8h |
| 201 | 1.8.19 | **Online Review Phases (custom)** | 26d | 2006-06-22 | 2006-07-27 |  | 0d |  |  | 208h |
| 202 | 1.8.19.1 | Design Posting | 6d | 2006-06-22 | 2006-06-29 |  | 0d | start no earlier than 2006-06-22 | Member | 48h |
| 203 | 1.8.19.2 | Design Review | 4d | 2006-06-30 | 2006-07-05 | 202 | 0d | finish no earlier than 2005-03-21 | Member | 32h |
| 204 | 1.8.19.3 | Design Final Fixes | 2d | 2006-07-06 | 2006-07-07 | 203 | 0d |  | Member | 16h |
| 205 | 1.8.19.4 | Creation of Dev Distro | 1d | 2006-07-10 | 2006-07-10 | 204 | 0d |  | Component Manager | 8h |
| 206 | 1.8.19.5 | Development Posting | 6d | 2006-07-11 | 2006-07-18 | 205 | 0d | start no earlier than 2005-03-30 | Member | 48h |
| 207 | 1.8.19.6 | Development Review | 4d | 2006-07-19 | 2006-07-24 | 206 | 0d |  | Member | 32h |
| 208 | 1.8.19.7 | Development Final Fixes | 2d | 2006-07-25 | 2006-07-26 | 207 | 0d | finish no earlier than 2005-04-06 | Member | 16h |
| 209 | 1.8.19.8 | Post to Catalog | 1d | 2006-07-27 | 2006-07-27 | 208 | 0d |  | Component Manager | 8h |
| 210 | 1.8.20 | **Online Review Web Elements (custom)** | 26d | 2006-06-22 | 2006-07-27 |  | 0d |  |  | 208h |
| 211 | 1.8.20.1 | Design Posting | 6d | 2006-06-22 | 2006-06-29 |  | 0d | start no earlier than 2006-06-22 | Member | 48h |
| 212 | 1.8.20.2 | Design Review | 4d | 2006-06-30 | 2006-07-05 | 211 | 0d | finish no earlier than 2005-03-21 | Member | 32h |
| 213 | 1.8.20.3 | Design Final Fixes | 2d | 2006-07-06 | 2006-07-07 | 212 | 0d |  | Member | 16h |
| 214 | 1.8.20.4 | Creation of Dev Distro | 1d | 2006-07-10 | 2006-07-10 | 213 | 0d |  | Component Manager | 8h |
| 215 | 1.8.20.5 | Development Posting | 6d | 2006-07-11 | 2006-07-18 | 214 | 0d | start no earlier than 2005-03-30 | Member | 48h |
| 216 | 1.8.20.6 | Development Review | 4d | 2006-07-19 | 2006-07-24 | 215 | 0d |  | Member | 32h |
| 217 | 1.8.20.7 | Development Final Fixes | 2d | 2006-07-25 | 2006-07-26 | 216 | 0d | finish no earlier than 2005-04-06 | Member | 16h |
| 218 | 1.8.20.8 | Post to Catalog | 1d | 2006-07-27 | 2006-07-27 | 217 | 0d |  | Component Manager | 8h |

| ID | WBS | Task | Duration | Start | Finish | Predecessors | Total slack | Constraint | Resources | Work |
| --- | --- | --- | --- | --- | --- | --- | --- | --- | --- | --- |
| 219 | 1.8.21 | **Auto Pilot** | 26d | 2006-06-22 | 2006-07-27 |  | 0d |  |  | 208h |
| 220 | 1.8.21.1 | Design Posting | 6d | 2006-06-22 | 2006-06-29 |  | 0d | start no earlier than 2006-06-22 | Member | 48h |
| 221 | 1.8.21.2 | Design Review | 4d | 2006-06-30 | 2006-07-05 | 220 | 0d | finish no earlier than 2005-03-21 | Member | 32h |
| 222 | 1.8.21.3 | Design Final Fixes | 2d | 2006-07-06 | 2006-07-07 | 221 | 0d |  | Member | 16h |
| 223 | 1.8.21.4 | Creation of Dev Distro | 1d | 2006-07-10 | 2006-07-10 | 222 | 0d |  | Component Manager | 8h |
| 224 | 1.8.21.5 | Development Posting | 6d | 2006-07-11 | 2006-07-18 | 223 | 0d | start no earlier than 2005-03-30 | Member | 48h |
| 225 | 1.8.21.6 | Development Review | 4d | 2006-07-19 | 2006-07-24 | 224 | 0d |  | Member | 32h |
| 226 | 1.8.21.7 | Development Final Fixes | 2d | 2006-07-25 | 2006-07-26 | 225 | 0d | finish no earlier than 2005-04-06 | Member | 16h |
| 227 | 1.8.21.8 | Post to Catalog | 1d | 2006-07-27 | 2006-07-27 | 226 | 0d |  | Component Manager | 8h |
| 228 | 1.8.22 | **Auto Screening** | 26d | 2006-06-22 | 2006-07-27 |  | 0d |  |  | 208h |
| 229 | 1.8.22.1 | Design Posting | 6d | 2006-06-22 | 2006-06-29 |  | 0d | start no earlier than 2006-06-22 | Member | 48h |
| 230 | 1.8.22.2 | Design Review | 4d | 2006-06-30 | 2006-07-05 | 229 | 0d | finish no earlier than 2005-03-21 | Member | 32h |
| 231 | 1.8.22.3 | Design Final Fixes | 2d | 2006-07-06 | 2006-07-07 | 230 | 0d |  | Member | 16h |
| 232 | 1.8.22.4 | Creation of Dev Distro | 1d | 2006-07-10 | 2006-07-10 | 231 | 0d |  | Component Manager | 8h |
| 233 | 1.8.22.5 | Development Posting | 6d | 2006-07-11 | 2006-07-18 | 232 | 0d | start no earlier than 2005-03-30 | Member | 48h |
| 234 | 1.8.22.6 | Development Review | 4d | 2006-07-19 | 2006-07-24 | 233 | 0d |  | Member | 32h |
| 235 | 1.8.22.7 | Development Final Fixes | 2d | 2006-07-25 | 2006-07-26 | 234 | 0d | finish no earlier than 2005-04-06 | Member | 16h |
| 236 | 1.8.22.8 | Post to Catalog | 1d | 2006-07-27 | 2006-07-27 | 235 | 0d |  | Component Manager | 8h |
| 237 | 1.9 | **Assembly Competitions** | 668d | 2004-01-27 | 2006-08-17 |  | 0d |  |  | 192h |
| 238 | 1.9.1 | **Setup** | 653d | 2004-01-27 | 2006-07-27 |  | 15d |  |  |  |
| 239 | 1.9.1.1 | Divide Use Cases for Competitions | 1d | 2006-07-07 | 2006-07-07 | 38FS-15d | 29d | start no earlier than 2006-03-29 |  |  |
| 240 | 1.9.1.2 | TopCoder Website Content Creation | 5d | 2006-07-21 | 2006-07-27 | 38FS-5d | 15d |  |  |  |
| 241 | 1.9.1.3 | TopCoder Website Informaiton Posted | 1d | 2006-07-14 | 2006-07-14 | 38FS-10d | 0d | start no earlier than 2006-05-17 |  |  |
| 242 | 1.9.1.4 | Package Components | 1d | 2004-01-27 | 2004-01-27 |  | 648d |  |  |  |

| ID | WBS | Task | Duration | Start | Finish | Predecessors | Total slack | Constraint | Resources | Work | Text1 |
| --- | --- | --- | --- | --- | --- | --- | --- | --- | --- | --- | --- |
| 243 | 1.9.2 | **Test Case Development** | 5d | 2006-07-17 | 2006-07-21 |  | 0d |  |  | 32h |  |
| 244 | 1.9.2.1 | Submit tests | 4d | 2006-07-17 | 2006-07-20 | 241 | 0d | start no earlier than 2006-03-22 | test case participants | 32h |  |
| 245 | 1.9.2.2 | Screen test cases | 1d | 2006-07-21 | 2006-07-21 | 244 | 0d |  |  |  |  |
| 246 | 1.9.3 | Team Formation | 10d | 2006-07-17 | 2006-07-28 | 241 | 14d |  |  |  |  |
| 247 | 1.9.4 | **Development** | 19d | 2006-07-24 | 2006-08-17 |  | 0d |  |  | 160h |  |
| 248 | 1.9.4.1 | **Opening Round** | 19d | 2006-07-24 | 2006-08-17 |  | 0d |  |  | 160h |  |
| 249 | 1.9.4.1.1 | **Team Development** | 6d | 2006-07-24 | 2006-07-31 |  | 0d |  |  | 48h |  |
| 250 | 1.9.4.1.1.1 | **Development of Use Cases** | 6d | 2006-07-24 | 2006-07-31 |  | 0d |  | All Teams | 48h | prototype conversion, sequence diagram implementation |
| 251 | 1.9.4.1.1.1.1 | Create Unit Tests | 3d | 2006-07-24 | 2006-07-26 | 242, 243 | 0d | start no earlier than 2006-03-28 |  |  |  |
| 252 | 1.9.4.1.1.1.2 | Convert Prototype | 3d | 2006-07-24 | 2006-07-26 | 242, 243 | 0d | start no earlier than 2006-03-29 |  |  |  |
| 253 | 1.9.4.1.1.1.3 | Configure components | 3d | 2006-07-24 | 2006-07-26 | 242, 243 | 0d | start no earlier than 2006-03-29 |  |  |  |
| 254 | 1.9.4.1.1.1.4 | Test | 3d | 2006-07-27 | 2006-07-31 | 251, 252, 253 | 0d |  |  |  |  |
| 255 | 1.9.4.1.2 | **Test case challenge** | 2d | 2006-08-01 | 2006-08-02 | 254 | 0d |  | All Captains | 56h |  |
| 256 | 1.9.4.1.2.1 | Submit Challenges | 1d | 2006-08-01 | 2006-08-01 |  | 0d |  |  |  |  |
| 257 | 1.9.4.1.2.2 | Appeals response | 1d | 2006-08-02 | 2006-08-02 | 256 | 0d |  | Reviewer3; Reviewer2; Reviewer1; Assembly Manager; Architect | 40h |  |
| 258 | 1.9.4.1.3 | **Review** | 11d | 2006-08-03 | 2006-08-17 |  | 0d |  |  | 56h |  |
| 259 | 1.9.4.1.3.1 | Score Testcases | 1d | 2006-08-03 | 2006-08-03 | 255 | 1d |  | DE | 8h |  |
| 260 | 1.9.4.1.3.2 | Score Submissions | 2d | 2006-08-03 | 2006-08-04 | 255 | 0d |  | DE | 16h |  |
| 261 | 1.9.4.1.3.3 | Review Code | 2d | 2006-08-07 | 2006-08-08 | 259, 260 | 0d |  | Review Team | 16h |  |
| 262 | 1.9.4.1.3.4 | Appeals | 1d | 2006-08-09 | 2006-08-09 | 261 | 0d |  | Review Team | 8h |  |
| 263 | 1.9.4.1.3.5 | Appeals Response | 1d | 2006-08-10 | 2006-08-10 | 262 | 0d |  | Review Team | 8h |  |
| 264 | 1.9.4.1.3.6 | Final Fixes | 3d | 2006-08-11 | 2006-08-15 | 263 | 0d |  |  |  |  |
| 265 | 1.9.4.1.3.7 | Final Review | 1d | 2006-08-16 | 2006-08-16 | 264 | 0d |  |  |  |  |
| 266 | 1.9.4.1.3.8 | PM Review/Certification | 1d | 2006-08-17 | 2006-08-17 | 265 | 0d |  |  |  |  |

| ID | WBS | Task | Type | Duration | Start | Finish | Predecessors | Total slack | Free slack | Constraint | Resources | Work |
| --- | --- | --- | --- | --- | --- | --- | --- | --- | --- | --- | --- | --- |
| 267 | 1.10 | **Deployment** |  | 13d | 2006-08-18 | 2006-09-05 |  | 16d | 0d |  |  | 152h |
| 268 | 1.10.1 | Deployment |  | 4d | 2006-08-18 | 2006-08-23 | 237 | 16d | 0d | finish no earlier than 2005-05-27 | Project Manager; Application Assembler 1 | 64h |
| 269 | 1.10.2 | **Testing Iteration** |  | 9d | 2006-08-24 | 2006-09-05 |  | 16d |  |  |  | 88h |
| 270 | 1.10.2.1 | Test Plan Execution |  | 3d | 2006-08-24 | 2006-08-28 | 268 | 16d | 0d | finish no earlier than 2005-06-03 | Project Manager; Application Assembler 1 | 48h |
| 271 | 1.10.2.2 | User Acceptance Testing | milestone | 5d | 2006-08-29 | 2006-09-04 | 270 | 16d | 0d | finish no earlier than 2005-06-03 | Customer | 40h |
| 272 | 1.10.2.3 | PM Certification |  | 1d | 2006-09-05 | 2006-09-05 | 271 | 16d |  |  |  |  |
| 273 | 1.11 | **Support** |  | 30d | 2006-08-18 | 2006-09-28 |  | 0d |  |  |  | 240h |
| 274 | 1.11.1 | Capture DRs |  | 15d | 2006-08-18 | 2006-09-07 | 237 | 0d |  |  | Project Manager | 120h |
| 275 | 1.11.2 | Release Fix |  | 15d | 2006-09-08 | 2006-09-28 | 274 | 0d |  |  | Project Manager | 120h |
| 276 | 1.12 | Send out how-to info to users |  | 1d | 2006-08-18 | 2006-08-18 | 266 | 29d |  |  |  |  |
| 277 | 1.13 | Beta Release to internal users |  | 1d | 2006-09-06 | 2006-09-06 | 267 | 16d |  |  |  |  |
